# Show Case Project Plan

Schedule from MS Project, 2024-10-18 to 2025-04-22, costs in $.

## Calendars

- Standard: Mon-Fri 08:00-12:00, 13:00-17:00; Sat-Sun off.

## Resources

| Resource | Rate |
| --- | --- |
| Project Manager | 285 |
| Solution Architect | 285 |
| Product configuration analyst | 125 |
| QA analyst | 125 |
| Dev Ops | 125 |
| Trainer | 100 |

## Schedule

| ID | WBS | Task | Duration | Start | Finish | Predecessors | Total slack | Free slack | Constraint | Resources | Work | Cost |
| --- | --- | --- | --- | --- | --- | --- | --- | --- | --- | --- | --- | --- |
| 1 | 1 | **Technical Product Implementation Project Plan** | 133d? | 2024-10-18 | 2025-04-22 |  | 0d |  |  |  | 4416h | 971,760 |
| 2 | 1.1 | **Planning** | 13d | 2024-10-18 | 2024-11-05 |  | 118d |  |  |  | 144h | 41,040 |
| 3 | 1.1.1 | Receive sales to implementaion documents | 1d | 2024-10-18 | 2024-10-18 |  | 118d | 0d |  | Project Manager | 8h | 2,280 |
| 4 | 1.1.2 | Review sales to implementation documents | 2d | 2024-10-21 | 2024-10-22 | 3 | 118d | 0d |  | Project Manager | 16h | 4,560 |
| 5 | 1.1.3 | Schedule sales to implementation transition meeting | 1d | 2024-10-23 | 2024-10-23 | 4 | 118d | 0d |  | Project Manager | 8h | 2,280 |
| 6 | 1.1.4 | Raise request for project resources assignment | 1d | 2024-10-24 | 2024-10-24 | 5 | 128d |  |  | Project Manager | 8h | 2,280 |
| 7 | 1.1.5 | Send welcome email to client | 1d | 2024-10-24 | 2024-10-24 | 5 | 118d | 0d |  | Project Manager | 8h | 2,280 |
| 8 | 1.1.6 | Schedule client pre-kickoff meeting | 1d | 2024-10-25 | 2024-10-25 | 7 | 118d | 0d |  | Project Manager | 8h | 2,280 |
| 9 | 1.1.7 | Schedule internal kick-off meeting | 1d | 2024-10-28 | 2024-10-28 | 8 | 118d | 0d |  | Project Manager | 8h | 2,280 |
| 10 | 1.1.8 | Schedule client kick-off meeting | 1d | 2024-10-29 | 2024-10-29 | 9 | 118d | 0d |  | Project Manager | 8h | 2,280 |
| 11 | 1.1.9 | Provide data gathering and product documents to client | 3d | 2024-10-30 | 2024-11-01 | 10 | 122d |  |  | Project Manager | 24h | 6,840 |
| 12 | 1.1.10 | Provide SSO certificates to client | 5d | 2024-10-30 | 2024-11-05 | 10 | 118d | 0d |  | Project Manager | 40h | 11,400 |
| 13 | 1.1.11 | Schedule product demonstration session | 1d | 2024-10-30 | 2024-10-30 | 10 | 119d | 0d |  | Project Manager | 8h | 2,280 |
| 14 | 1.2 | **Governance** | 133d | 2024-10-18 | 2025-04-22 |  | 0d |  |  | Project Manager | 1336h | 380,760 |
| 15 | 1.2.1 | **Status Meeting** | 133d | 2024-10-18 | 2025-04-22 |  | 0d |  |  |  | 272h | 77,520 |
| 16 | 1.2.1.1 | Status Meeting 1 | 1d | 2024-10-22 | 2024-10-22 |  | 130d |  | start no earlier than 2024-10-22 | Project Manager | 8h | 2,280 |
| 17 | 1.2.1.2 | Status Meeting 2 | 1d | 2024-10-29 | 2024-10-29 |  | 125d |  | start no earlier than 2024-10-29 | Project Manager | 8h | 2,280 |
| 18 | 1.2.1.3 | Status Meeting 3 | 1d | 2024-11-05 | 2024-11-05 |  | 120d |  | start no earlier than 2024-11-05 | Project Manager | 8h | 2,280 |
| 19 | 1.2.1.4 | Status Meeting 4 | 1d | 2024-11-12 | 2024-11-12 |  | 115d |  | start no earlier than 2024-11-12 | Project Manager | 8h | 2,280 |
| 20 | 1.2.1.5 | Status Meeting 5 | 1d | 2024-11-19 | 2024-11-19 |  | 110d |  | start no earlier than 2024-11-19 | Project Manager | 8h | 2,280 |
| 21 | 1.2.1.6 | Status Meeting 6 | 1d | 2024-11-26 | 2024-11-26 |  | 105d |  | start no earlier than 2024-11-26 | Project Manager | 8h | 2,280 |
| 22 | 1.2.1.7 | Status Meeting 7 | 1d | 2024-12-03 | 2024-12-03 |  | 100d |  | start no earlier than 2024-12-03 | Project Manager | 8h | 2,280 |
| 23 | 1.2.1.8 | Status Meeting 8 | 1d | 2024-12-10 | 2024-12-10 |  | 95d |  | start no earlier than 2024-12-10 | Project Manager | 8h | 2,280 |
| 24 | 1.2.1.9 | Status Meeting 9 | 1d | 2024-12-17 | 2024-12-17 |  | 90d |  | start no earlier than 2024-12-17 | Project Manager | 8h | 2,280 |
| 25 | 1.2.1.10 | Status Meeting 10 | 1d | 2024-12-24 | 2024-12-24 |  | 85d |  | start no earlier than 2024-12-24 | Project Manager | 8h | 2,280 |
| 26 | 1.2.1.11 | Status Meeting 11 | 1d | 2024-12-31 | 2024-12-31 |  | 80d |  | start no earlier than 2024-12-31 | Project Manager | 8h | 2,280 |
| 27 | 1.2.1.12 | Status Meeting 12 | 1d | 2025-01-07 | 2025-01-07 |  | 75d |  | start no earlier than 2025-01-07 | Project Manager | 8h | 2,280 |
| 28 | 1.2.1.13 | Status Meeting 13 | 1d | 2025-01-14 | 2025-01-14 |  | 70d |  | start no earlier than 2025-01-14 | Project Manager | 8h | 2,280 |
| 29 | 1.2.1.14 | Status Meeting 14 | 1d | 2025-01-21 | 2025-01-21 |  | 65d |  | start no earlier than 2025-01-21 | Project Manager | 8h | 2,280 |
| 30 | 1.2.1.15 | Status Meeting 15 | 1d | 2025-01-28 | 2025-01-28 |  | 60d |  | start no earlier than 2025-01-28 | Project Manager | 8h | 2,280 |
| 31 | 1.2.1.16 | Status Meeting 16 | 1d | 2025-02-04 | 2025-02-04 |  | 55d |  | start no earlier than 2025-02-04 | Project Manager | 8h | 2,280 |
| 32 | 1.2.1.17 | Status Meeting 17 | 1d | 2025-02-11 | 2025-02-11 |  | 50d |  | start no earlier than 2025-02-11 | Project Manager | 8h | 2,280 |
| 33 | 1.2.1.18 | Status Meeting 18 | 1d | 2025-02-18 | 2025-02-18 |  | 45d |  | start no earlier than 2025-02-18 | Project Manager | 8h | 2,280 |
| 34 | 1.2.1.19 | Status Meeting 19 | 1d | 2025-02-25 | 2025-02-25 |  | 40d |  | start no earlier than 2025-02-25 | Project Manager | 8h | 2,280 |
| 35 | 1.2.1.20 | Status Meeting 20 | 1d | 2025-03-04 | 2025-03-04 |  | 35d |  | start no earlier than 2025-03-04 | Project Manager | 8h | 2,280 |
| 36 | 1.2.1.21 | Status Meeting 21 | 1d | 2025-03-11 | 2025-03-11 |  | 30d |  | start no earlier than 2025-03-11 | Project Manager | 8h | 2,280 |
| 37 | 1.2.1.22 | Status Meeting 22 | 1d | 2025-03-18 | 2025-03-18 |  | 25d |  | start no earlier than 2025-03-18 | Project Manager | 8h | 2,280 |
| 38 | 1.2.1.23 | Status Meeting 23 | 1d | 2025-03-25 | 2025-03-25 |  | 20d |  | start no earlier than 2025-03-25 | Project Manager | 8h | 2,280 |
| 39 | 1.2.1.24 | Status Meeting 24 | 1d | 2025-04-01 | 2025-04-01 |  | 15d |  | start no earlier than 2025-04-01 | Project Manager | 8h | 2,280 |
| 40 | 1.2.1.25 | Status Meeting 25 | 1d | 2025-04-08 | 2025-04-08 |  | 10d |  | start no earlier than 2025-04-08 | Project Manager | 8h | 2,280 |
| 41 | 1.2.1.26 | Status Meeting 26 | 1d | 2025-04-15 | 2025-04-15 |  | 5d |  | start no earlier than 2025-04-15 | Project Manager | 8h | 2,280 |
| 42 | 1.2.1.27 | Status Meeting 27 | 1d | 2025-04-22 | 2025-04-22 |  | 0d |  | start no earlier than 2025-04-22 | Project Manager | 8h | 2,280 |

| ID | WBS | Task | Type | Duration | Start | Finish | Predecessors | Total slack | Free slack | Constraint | Resources | Work | Cost |
| --- | --- | --- | --- | --- | --- | --- | --- | --- | --- | --- | --- | --- | --- |
| 43 | 1.2.1.28 | **Steering Committee Meeting** |  | 131d | 2024-10-18 | 2025-04-18 |  | 2d |  |  |  | 56h | 15,960 |
| 44 | 1.2.1.28.1 | Steering Committee Meeting 1 |  | 1d | 2024-10-18 | 2024-10-18 |  | 132d |  | start no earlier than 2024-10-18 | Project Manager | 8h | 2,280 |
| 45 | 1.2.1.28.2 | Steering Committee Meeting 2 |  | 1d | 2024-11-18 | 2024-11-18 |  | 111d |  | start no earlier than 2024-11-18 | Project Manager | 8h | 2,280 |
| 46 | 1.2.1.28.3 | Steering Committee Meeting 3 |  | 1d | 2024-12-18 | 2024-12-18 |  | 89d |  | start no earlier than 2024-12-18 | Project Manager | 8h | 2,280 |
| 47 | 1.2.1.28.4 | Steering Committee Meeting 4 |  | 1d | 2025-01-20 | 2025-01-20 |  | 66d |  | start no earlier than 2025-01-18 | Project Manager | 8h | 2,280 |
| 48 | 1.2.1.28.5 | Steering Committee Meeting 5 |  | 1d | 2025-02-18 | 2025-02-18 |  | 45d |  | start no earlier than 2025-02-18 | Project Manager | 8h | 2,280 |
| 49 | 1.2.1.28.6 | Steering Committee Meeting 6 |  | 1d | 2025-03-18 | 2025-03-18 |  | 25d |  | start no earlier than 2025-03-18 | Project Manager | 8h | 2,280 |
| 50 | 1.2.1.28.7 | Steering Committee Meeting 7 |  | 1d | 2025-04-18 | 2025-04-18 |  | 2d |  | start no earlier than 2025-04-18 | Project Manager | 8h | 2,280 |
| 51 | 1.3 | **Initiation** |  | 45d | 2024-10-18 | 2024-12-19 |  | 7d |  |  |  | 320h | 91,200 |
| 52 | 1.3.1 | Complete product demo session |  | 5d | 2024-10-31 | 2024-11-06 | 13 | 119d |  |  | Project Manager; Solution Architect | 80h | 22,800 |
| 53 | 1.3.2 | Complete data gathering workshops |  | 15d | 2024-10-18 | 2024-11-07 |  | 7d | 0d |  | Project Manager; Solution Architect | 240h | 68,400 |
| 54 | 1.3.3 | Client to review and complete data gathering documents from client |  | 30d | 2024-11-08 | 2024-12-19 | 53 | 7d | 0d |  |  |  |  |
| 55 | 1.3.4 | Client to provide SSO certificates |  | 10d | 2024-11-08 | 2024-11-21 | 53 | 93d | 0d |  |  |  |  |
| 56 | 1.3.5 | Client to submit completed data gathering documents | milestone | 0d | 2024-12-19 | 2024-12-19 | 54 | 7d | 0d |  |  |  |  |
| 57 | 1.4 | **Product configurations** |  | 62d | 2024-11-06 | 2025-01-30 |  | 39d |  |  |  | 440h | 55,000 |
| 58 | 1.4.1 | Begin product configurations customizations |  | 20d | 2024-12-20 | 2025-01-16 | 56 | 47d | 0d |  | Product configuration analyst | 160h | 20,000 |
| 59 | 1.4.2 | Deploy client SSO certificates |  | 15d | 2024-11-22 | 2024-12-12 | 55 | 93d |  |  | Dev Ops | 120h | 15,000 |
| 60 | 1.4.3 | Client to confirm certificates deployment |  | 1d | 2024-11-06 | 2024-11-06 | 12 | 118d | 0d |  |  |  |  |
| 61 | 1.4.4 | Complete email whitelisting |  | 10d | 2025-01-17 | 2025-01-30 | 58 | 58d |  |  | Product configuration analyst | 80h | 10,000 |
| 62 | 1.4.5 | Deploy changes in Main QA |  | 5d | 2024-12-20 | 2024-12-26 | 56 | 7d | 0d |  | Dev Ops | 40h | 5,000 |
| 63 | 1.4.6 | Deploy chages in Certification |  | 5d | 2024-12-27 | 2025-01-02 | 62 | 7d | 0d |  | Dev Ops | 40h | 5,000 |
| 64 | 1.5 | **Training** |  | 21d | 2025-01-17 | 2025-02-14 |  | 47d |  |  | Trainer | 168h | 16,800 |
| 65 | 1.5.1 | Scheudle training sessions |  | 1d | 2025-01-17 | 2025-01-17 | 58 | 47d | 0d |  |  |  |  |
| 66 | 1.5.2 | Complete training sessions |  | 20d | 2025-01-20 | 2025-02-14 | 65 | 47d |  |  |  |  |  |

| ID | WBS | Task | Type | Duration | Start | Finish | Predecessors | Total slack | Free slack | Resources | Work | Cost |
| --- | --- | --- | --- | --- | --- | --- | --- | --- | --- | --- | --- | --- |
| 67 | 1.6 | **Verification** |  | 126d | 2024-10-18 | 2025-04-11 |  | 7d |  |  | 1656h | 317,080 |
| 68 | 1.6.1 | Main QA testing |  | 15d | 2024-12-27 | 2025-01-16 | 62 | 68d |  | QA analyst | 120h | 15,000 |
| 69 | 1.6.2 | Certification testing |  | 15d | 2025-01-03 | 2025-01-23 | 63 | 63d |  | QA analyst | 120h | 15,000 |
| 70 | 1.6.3 | Ping test SSO |  | 1d | 2024-11-07 | 2024-11-07 | 60 | 118d |  | Dev Ops | 8h | 1,000 |
| 71 | 1.6.4 | Log issues |  | 15d | 2025-01-03 | 2025-01-23 | 63 | 63d |  | Project Manager | 120h | 34,200 |
| 72 | 1.6.5 | Resolve issues |  | 20d | 2025-01-03 | 2025-01-30 | 63 | 7d | 0d | Product configuration analyst; Solution Architect; QA analyst | 480h | 85,600 |
| 73 | 1.6.6 | Confirm client to begin testing |  | 1d | 2025-01-31 | 2025-01-31 | 72 | 7d | 0d |  |  |  |
| 74 | 1.6.7 | Client to test |  | 25d | 2025-02-03 | 2025-03-07 | 73 | 7d | 0d |  |  |  |
| 75 | 1.6.8 | Schedule daily triage meetings |  | 1d | 2025-01-31 | 2025-01-31 | 72 | 57d |  | Project Manager | 8h | 2,280 |
| 76 | 1.6.9 | Complete client testing |  | 1d | 2025-03-10 | 2025-03-10 | 74 | 31d |  |  |  |  |
| 77 | 1.6.10 | Log issues |  | 25d | 2025-03-10 | 2025-04-11 | 74 | 7d |  | Project Manager | 200h | 57,000 |
| 78 | 1.6.11 | Resolve P1 issues |  | 25d | 2025-03-10 | 2025-04-11 | 74 | 7d |  | Product configuration analyst; Solution Architect; QA analyst | 600h | 107,000 |
| 79 | 1.6.12 | Client to sign off certification testing | milestone | 0d | 2024-10-18 | 2024-10-18 |  | 95d | 0d |  |  |  |
| 80 | 1.7 | **Production** |  | 38d? | 2024-10-18 | 2024-12-10 |  | 95d |  |  | 352h | 69,880 |
| 81 | 1.7.1 | Raise request for go-live deployment |  | 1d | 2024-10-18 | 2024-10-18 | 79 | 95d | 0d | Project Manager | 8h | 2,280 |
| 82 | 1.7.2 | Get approval for production code deployment |  | 3d | 2024-10-21 | 2024-10-23 | 81 | 95d | 0d | Dev Ops | 24h | 3,000 |
| 83 | 1.7.3 | Create go-live play book |  | 3d | 2024-10-24 | 2024-10-28 | 82 | 95d | 0d | Project Manager | 24h | 6,840 |
| 84 | 1.7.4 | Review go-live playbook internally |  | 3d | 2024-10-29 | 2024-10-31 | 83 | 95d | 0d | Project Manager; Dev Ops; Product configuration analyst; QA analyst; Solution Architect; Trainer | 144h | 25,080 |
| 85 | 1.7.5 | Review go-live play book with client |  | 5d | 2024-11-01 | 2024-11-07 | 84 | 95d | 0d | Project Manager | 40h | 11,400 |
| 86 | 1.7.6 | Email go-live play book |  | 1d | 2024-11-08 | 2024-11-08 | 85 | 95d | 0d | Project Manager | 8h | 2,280 |
| 87 | 1.7.7 | Email go-live information to Customer Support |  | 1d? | 2024-11-11 | 2024-11-11 | 86 | 116d |  | Project Manager | 8h | 2,280 |
| 88 | 1.7.8 | Go-No Go Meeting |  | 2d | 2024-11-11 | 2024-11-12 | 86 | 95d | 0d | Project Manager; Dev Ops; Product configuration analyst; QA analyst; Trainer; Solution Architect | 96h | 16,720 |
| 89 | 1.7.9 | Go-live | milestone | 0d | 2024-11-12 | 2024-11-12 | 88 | 95d | 0d |  |  |  |
| 90 | 1.7.10 | Smoke test |  | 1d | 2024-10-18 | 2024-10-18 |  | 112d | 0d |  |  |  |
| 91 | 1.7.11 | Client sign-off production testing | milestone | 0d | 2024-11-12 | 2024-11-12 | 89 | 95d | 0d |  |  |  |
| 92 | 1.7.12 | Log issues |  | 20d | 2024-11-13 | 2024-12-10 | 91 | 95d |  |  |  |  |
| 93 | 1.7.13 | Schedule daily triage meetings |  | 1d? | 2024-11-13 | 2024-11-13 | 91 | 114d |  |  |  |  |
| 94 | 1.7.14 | Resolve issues |  | 20d | 2024-10-21 | 2024-11-15 | 90 | 112d |  |  |  |  |

| ID | WBS | Task | Type | Duration | Start | Finish | Predecessors | Total slack | Free slack |
| --- | --- | --- | --- | --- | --- | --- | --- | --- | --- |
| 95 | 1.8 | **Transiton** |  | 8d | 2024-11-13 | 2024-11-22 |  | 100d |  |
| 96 | 1.8.1 | Complete transition documents |  | 3d | 2024-11-13 | 2024-11-15 | 91 | 100d | 0d |
| 97 | 1.8.2 | Schedule meeting with customer support |  | 1d | 2024-11-18 | 2024-11-18 | 96 | 100d | 0d |
| 98 | 1.8.3 | Review transition documents |  | 3d | 2024-11-19 | 2024-11-21 | 97 | 100d | 0d |
| 99 | 1.8.4 | Scheudle transition to CS meeting with client |  | 1d | 2024-11-22 | 2024-11-22 | 98 | 100d | 0d |
| 100 | 1.8.5 | Complete transition | milestone | 0d | 2024-11-22 | 2024-11-22 | 99 | 100d | 0d |
| 101 | 1.9 | **Closing** |  | 7d | 2024-11-25 | 2024-12-03 |  | 100d |  |
| 102 | 1.9.1 | Document lesson learnt |  | 3d | 2024-11-25 | 2024-11-27 | 100 | 100d | 0d |
| 103 | 1.9.2 | Conduct lessons learnt meeting |  | 1d | 2024-11-28 | 2024-11-28 | 102 | 100d | 0d |
| 104 | 1.9.3 | Appreciate and rewards to team members |  | 3d | 2024-11-29 | 2024-12-03 | 103 | 100d | 0d |
| 105 | 1.9.4 | Close project | milestone | 0d | 2024-12-03 | 2024-12-03 | 104 | 100d |  |
